# 智慧看板專案

Schedule from a web Gantt chart, 2025-07-09 to 2026-01-07.
Saturdays and Sundays are off

## Schedule

| ID | WBS | Task | Type | Duration | Start | Finish |
| --- | --- | --- | --- | --- | --- | --- |
| 2 | 1 | 廠商報價(軟、硬體費用) | fixed start | 5d | 2025-07-16 | 2025-07-22 |
| 3 | 2 | 操作情境釐清 | fixed start | 6d | 2025-07-09 | 2025-07-16 |
| 4 | 3 | 龍巖kk型號 & 需求spec | fixed start | 1d | 2025-07-15 | 2025-07-15 |
| 5 | 4 | 廠商回復是否可沿用現有的kk機器 | fixed start | 13d | 2025-07-16 | 2025-08-01 |
| 6 | 5 | 廠商回覆建議方案 | fixed start | 11d | 2025-07-18 | 2025-08-01 |
| 7 | 6 | 前往宏碁看後台操作&建議方案討論 |  | 1d | 2025-08-06 | 2025-08-06 |
| 8 | 7 | 廠商更新報價單(軟體、硬體、備品、教育訓練) |  | 4d | 2025-08-07 | 2025-08-12 |
| 9 | 8 | 評估是否執行專案 |  | 11d | 2025-08-12 | 2025-08-26 |
| 10 | 9 | 數量確認&場域確認 |  | 6d | 2025-08-27 | 2025-09-03 |
| 11 | 10 | 廠商報價單(含施工)+回簽訂單 |  | 11d | 2025-09-04 | 2025-09-18 |
| 12 | 11 | 備貨&出貨(8周) |  | 60d | 2025-09-19 | 2025-12-11 |
| 13 | 12 | 軟硬體安裝 |  | 8d | 2025-12-12 | 2025-12-23 |
| 14 | 13 | 教育訓練 |  | 4d | 2025-12-09 | 2025-12-12 |
| 15 | 14 | 上線前測試 |  | 6d | 2025-12-15 | 2025-12-22 |
| 16 | 15 | PROD |  | 1d | 2025-12-23 | 2025-12-23 |
| 17 | 16 | PROD優化 |  | 5d | 2025-12-24 | 2025-12-30 |
| 18 | 17 | 驗收 |  | 6d | 2025-12-31 | 2026-01-07 |

Notes:
- 5: AOPEN 無法承接目前已在使用的設備, 安裝AOPEN的軟體。
- 6: (1) 戶外數位看板: 建議採用戶外LED 方案 (AOPEN無此產品) (2) 室內數位看板: 建議採用55吋觸控Kiosk (底座附輪子), 省卻施工成本, 且可以依據活動狀況調整擺放位置。"
- 8: 場勘完提供報價
- 9: (8/19內部會議)
- 10: (安裝地點以及環境需明確說明,欲安裝場地需預留電源)
- 14: 線上軟體教育訓練
